# IVI_5_Update_Dec6 (2)

Schedule from MS Project, 2010-10-11 to 2010-12-24, A marks actual dates.

## Calendars

- Standard: Mon-Fri 08:00-12:00, 13:00-17:00; Sat-Sun off.

## Schedule

| ID | WBS | Task | Duration | Start | Finish | Predecessors | Complete | Remaining | Total slack | Constraint | Work |
| --- | --- | --- | --- | --- | --- | --- | --- | --- | --- | --- | --- |
| 1 | 1 | **Project Management** | 26d | 2010-11-08 A | 2010-12-13 |  | 33% | 17.33d | 9d |  | 24h |
| 2 | 1.1 | Draft PMP | 8h | 2010-11-08 A | 2010-11-08 A |  | 100% |  |  | start no earlier than 2010-11-08 | 8h |
| 3 | 1.2 | **Monthly Report** | 21d | 2010-11-15 A | 2010-12-13 |  |  | 21d | 9d |  | 16h |
| 4 | 1.2.1 | Nov Report | 8h | 2010-11-15 A | 2010-11-15 |  |  | 8h | 29d | start no earlier than 2010-11-15 | 8h |
| 5 | 1.2.2 | Dec Report | 8h | 2010-12-13 A | 2010-12-13 |  |  | 8h | 9d | start no earlier than 2010-12-13 | 8h |
| 6 | 2 | **AIM Pathology** | 45d | 2010-10-11 A | 2010-12-10 |  | 65% | 15.75d | 10d |  | 440h |
| 7 | 2.1 | Use Case Gathering | 360h | 2010-10-11 A | 2010-12-10 |  | 75% | 90h | 10d |  | 360h |
| 8 | 2.2 | Draft Gap Analysis | 80h | 2010-11-29 A | 2010-12-10 |  | 20% | 64h | 10d | start no earlier than 2010-11-29 | 80h |
| 9 | 3 | **Imaging Security and ID Services** | 45d | 2010-10-25 A | 2010-12-24 |  | 58% | 18.9d | 0d |  | 800h |
| 10 | 3.1 | Review IMG Enterprise Services | 80h | 2010-10-25 A | 2010-11-05 A |  | 100% |  |  | start no earlier than 2010-10-25 | 80h |
| 11 | 3.2 | Review caGrid 2.0 roadmap security documentation from PST | 80h | 2010-10-25 A | 2010-11-05 A |  | 100% |  |  | start no earlier than 2010-10-25 | 80h |
| 12 | 3.3 | Draft UseCase for Imaging Security Services | 280h | 2010-11-08 A | 2010-12-24 | 10, 11 | 30% | 196h | 0d | start no earlier than 2010-11-08 | 280h |
| 13 | 3.4 | Review caGrid 1.4 ID Service | 80h | 2010-10-25 A | 2010-11-05 A |  | 100% |  |  | start no earlier than 2010-10-25 | 80h |
| 14 | 3.5 | Draft UseCase for IMAG ID Service | 280h | 2010-11-08 A | 2010-12-24 | 13 | 50% | 140h | 0d | start no earlier than 2010-11-08 | 280h |
| 15 | 4 | **AMIE v3.0 Support** | 44d | 2010-10-12 A | 2010-12-10 |  | 71% | 12.71d | 10d |  | 360h |
| 16 | 4.1 | AIME Service Upgrade to caGrid 1.3 | 200h | 2010-10-12 A | 2010-11-15 A |  | 100% |  |  | start no earlier than 2010-10-12 | 200h |
| 17 | 4.2 | Update existing AIM TCGA documents to AIM 3.0 schema | 160h | 2010-11-15 A | 2010-12-10 |  | 35% | 104h | 10d | start no earlier than 2010-11-15 | 160h |
| 18 | 5 | Ongoing VirtualPACS Support | 360h | 2010-10-12 A | 2010-12-13 |  | 87% | 46.8h | 9d | start no earlier than 2010-10-12 | 360h |
| 19 | 6 | **TCGA Workstation Support** | 10d | 2010-11-16 A | 2010-11-29 A |  | 100% |  |  |  | 80h |
| 20 | 6.1 | Provide support for AIME 3.0 upgrade | 80h | 2010-11-16 A | 2010-11-29 A | 16 | 100% |  |  |  | 80h |
| 21 | 7 | **Travel & Community Engagement** | 11d | 2010-11-02 A | 2010-11-16 A |  | 100% |  |  |  | 40h |
| 22 | 7.1 | TBPT F2F | 24h | 2010-11-02 A | 2010-11-04 A |  | 100% |  |  | start no earlier than 2010-11-02 | 24h |
| 23 | 7.2 | QIN Informatics Workshop | 16h | 2010-11-15 A | 2010-11-16 A |  | 100% |  |  | start no earlier than 2010-11-15 | 16h |
